# WEMS

Schedule from MS Project, 2010-12-22 to 2011-01-05.

## Calendars

- 标准: Mon-Fri 08:00-12:00, 13:00-17:00; Sat-Sun off.

## Resources

| Resource |
| --- |
| 胡欣 |
| 况浩 |
| 袁云龙 |
| 张长风 |

## Schedule

| ID | WBS | Task | Duration | Start | Finish | Predecessors | Total slack | Free slack | Constraint | Resources | Work |
| --- | --- | --- | --- | --- | --- | --- | --- | --- | --- | --- | --- |
| 1 | 1 | **EMS 系统Web 端** | 11d? | 2010-12-22 | 2011-01-05 |  | 0d |  |  |  | 280h |
| 2 | 1.1 | **用户管理** | 11d? | 2010-12-22 | 2011-01-05 |  | 0d |  |  |  | 280h |
| 3 | 1.1.1 | 用户部门新增 | 3d? | 2010-12-22 | 2010-12-24 |  | 5d | 0d | start no earlier than 2010-12-22 | 况浩 | 24h |
| 4 | 1.1.2 | 用户新增 | 4d? | 2010-12-22 | 2010-12-27 |  | 0d |  | start no earlier than 2010-12-22 | 胡欣 | 32h |
| 5 | 1.1.3 | 用户删除/失效 | 3d | 2010-12-22 | 2010-12-24 |  | 0d |  | start no earlier than 2010-12-22 | 袁云龙 | 24h |
| 6 | 1.1.4 | 用户信息维护 | 4d | 2010-12-28 | 2010-12-31 | 4 | 0d |  |  | 胡欣 | 32h |
| 7 | 1.1.5 | 用户角色添加/删除 | 3d | 2010-12-27 | 2010-12-29 | 3 | 2d | 0d |  | 况浩 | 24h |
| 8 | 1.1.6 | 角色创建,角色删除/失效 | 5d | 2010-12-27 | 2010-12-31 | 5 | 0d |  |  | 袁云龙 | 40h |
| 9 | 1.1.7 | 角色信息维护 | 3d | 2011-01-03 | 2011-01-05 | 6 | 0d |  |  | 胡欣 | 24h |
| 10 | 1.1.8 | 部门信息维护 | 3d? | 2011-01-03 | 2011-01-05 | 8 | 0d |  |  | 袁云龙 | 24h |
| 11 | 1.1.9 | 角色实体添加/删除 | 3d | 2010-12-22 | 2010-12-24 |  | 4d |  |  | 张长风 | 24h |
| 12 | 1.1.10 | 角色设备添加/删除/失效 | 4d | 2010-12-27 | 2010-12-30 | 11 | 4d |  |  | 张长风 | 32h |
